# ELD-P232100020-CR-O-01

Schedule from MS Project, 2023-11-01 to 2024-04-26.

## Calendars

- ELECTRODUNAS: Mon-Sun 08:00-12:00, 13:00-17:00.

## Schedule

| ID | WBS | Task | Type | Duration | Start | Finish | Predecessors | Total slack | Free slack | Constraint |
| --- | --- | --- | --- | --- | --- | --- | --- | --- | --- | --- |
| 1 | 1 | **INGENIERÍA DE DETALLE PARA LA IMPLEMENTACIÓN DE NUEVAS CELDAS 10kV Y NUEVO TRANSFORMADOR 40/40/40 MVA EN LA SET TACAMA** |  | 177d | 2023-11-01 | 2024-04-26 |  | 0d |  |  |
| 2 | 1.1 | INICIO | milestone | 0d | 2023-11-01 | 2023-11-01 |  | 0d |  | start no earlier than 2023-11-01 |
| 3 | 1.2 | Campamento de obra (oficinas, almacén, vestuario, otros) |  | 3d | 2023-11-01 | 2023-11-04 | 2 | 0d |  |  |
| 4 | 1.3 | Movilización de equipos y maquinaria |  | 3d | 2023-11-01 | 2023-11-04 | 2 | 174d |  |  |
| 5 | 1.4 | Limpieza del terreno (área de trabajo) |  | 2d | 2023-11-04 | 2023-11-06 | 3 | 0d |  |  |
| 6 | 1.5 | Trazo, nivelación y replanteo |  | 3d | 2023-11-06 | 2023-11-09 | 5, 7, 8, 9 | 0d |  |  |
| 7 | 1.6 | Elaboración, implementación y administración del plan de seguridad y salud en el trabajo |  | 1d | 2023-11-01 | 2023-11-02 | 2 | 4d |  |  |
| 8 | 1.7 | Señalización temporal de seguridad |  | 1d | 2023-11-01 | 2023-11-02 | 2 | 4d |  |  |
| 9 | 1.8 | Capacitación en seguridad y salud |  | 1d | 2023-11-01 | 2023-11-02 | 2 | 4d |  |  |
| 10 | 1.9 | Limpieza final de la zona de trabajo (despeje de la zona) |  | 1d | 2023-11-09 | 2023-11-10 | 6 | 0d |  |  |
| 12 | 1.10 | Sala de celdas 10kV proyectada (obras civiles y de arquitectura) |  | 50d | 2023-11-10 | 2023-12-30 | 10 | 0d |  |  |
| 13 | 1.11 | Losa para transformador de SSAA, transformador ZZ y resistencia de puesta a tierra (zona de transformadores menores) |  | 16d | 2023-11-10 | 2023-11-26 | 10 | 44d | 0d |  |
| 14 | 1.12 | Canalizaciones preliminares desde la sala proyectada a patio de llaves |  | 15d | 2023-11-10 | 2023-11-25 | 10 | 45d | 35d |  |
| 15 | 1.13 | Adecuación de la malla de tierra profunda y superficial para la zona de transformadores menores, sala de celdas 10kV proyectada y canalizaciones preliminares |  | 5d | 2023-12-30 | 2024-01-04 | 12, 13, 14 | 10d |  |  |
| 16 | 1.14 | Montaje electromecánico de celdas y tableros en la sala 10kV proyectada (incluye pruebas) |  | 15d | 2023-12-30 | 2024-01-14 | 12 | 0d |  |  |
| 17 | 1.15 | Tendido de cables de media tensión desde celda de llegada 10kV proyectada dentro de la sala de celdas hasta el transformador de potencia existente |  | 2d | 2023-12-30 | 2024-01-01 | 12 | 7d | 0d |  |
| 18 | 1.16 | Tendido de cables de media tensión desde nuevas celdas 10kV hacia los postes de derivación aéreo subterráneo (para alimentadores) |  | 2d | 2024-01-01 | 2024-01-03 | 17 | 7d | 0d |  |
| 19 | 1.17 | Tendido de cables de media tensión desde nuevas celdas 10kV hasta la zona de transformadores menores |  | 2d | 2024-01-03 | 2024-01-05 | 18 | 7d | 0d |  |
| 20 | 1.18 | Tendido de cables de control para la integración de la nueva celda de llegada 10kV al sistema de protección diferencial del transformador existente (tablero ubicado en la sala de control exiestente) |  | 2d | 2024-01-05 | 2024-01-07 | 19 | 7d |  |  |
| 21 | 1.19 | Elaboración del plan de energización del nuevo sistema de celdas 10kV |  | 5d | 2023-11-01 | 2023-11-06 | 2 | 69d |  |  |
| 22 | 1.20 | Elaboración del plan de desmontaje de instalaciones existentes 10kV |  | 5d | 2023-11-01 | 2023-11-06 | 2 | 69d |  |  |
| 23 | 1.21 | **Energización de las celdas 10 kV proyectadas** |  | 1d | 2024-01-14 | 2024-01-15 |  | 0d |  |  |
| 24 | 1.21.1 | Desenergización del transformador de potencia |  | 1d | 2024-01-14 | 2024-01-15 | 21, 22, 12, 13, 14, 15, 16, 17, 18, 19, 20 | 0d |  |  |
| 25 | 1.21.2 | Desconexión del sistema de cables 10kV existente |  | 1d | 2024-01-14 | 2024-01-15 | 21, 22, 12, 13, 14, 15, 16, 17, 18, 19, 20 | 0d |  |  |
| 26 | 1.21.3 | Conexión del nuevo sistema de cables 10kV proyectado entre la nueva celda de llegada 10kV y los bornes del transformador de potencia respectivos |  | 1d | 2024-01-14 | 2024-01-15 | 21, 22, 12, 13, 14, 15, 16, 17, 18, 19, 20 | 0d |  |  |
| 27 | 1.21.4 | Reubicación, instalación y conexión del transformador ZZ |  | 1d | 2024-01-14 | 2024-01-15 | 21, 22, 12, 13, 14, 15, 16, 17, 18, 19, 20 | 0d |  |  |
| 28 | 1.21.5 | Reubicación, instalación y conexión del transformador de SSAA |  | 1d | 2024-01-14 | 2024-01-15 | 21, 22, 12, 13, 14, 15, 16, 17, 18, 19, 20 | 0d |  |  |
| 29 | 1.21.6 | Reubicación, instalación y conexión de la resistencia de puesta a tierra |  | 1d | 2024-01-14 | 2024-01-15 | 21, 22, 12, 13, 14, 15, 16, 17, 18, 19, 20 | 0d |  |  |
| 30 | 1.21.7 | Reubicación , instalación y conexión del banco de baterías existente |  | 1d | 2024-01-14 | 2024-01-15 | 21, 22, 12, 13, 14, 15, 16, 17, 18, 19, 20 | 0d |  |  |
| 31 | 1.21.8 | Reubicación , instalación y conexión del cargador rectificador existente |  | 1d | 2024-01-14 | 2024-01-15 | 21, 22, 12, 13, 14, 15, 16, 17, 18, 19, 20 | 0d |  |  |
| 32 | 1.21.9 | Conexión de las celdas de salida hasta 10kV (alimentadores) a los conductores aéreos correspondientes en postes de transición (TA121, TA122, TA123 y TA 124) |  | 1d | 2024-01-14 | 2024-01-15 | 21, 22, 12, 13, 14, 15, 16, 17, 18, 19, 20 | 0d |  |  |
| 33 | 1.21.10 | Conexión e integración de la celda de llegada 10kV al sistema de protección diferencial del transformador |  | 1d | 2024-01-14 | 2024-01-15 | 21, 22, 12, 13, 14, 15, 16, 17, 18, 19, 20 | 0d |  |  |
| 34 | 1.21.11 | Energización del transformador de potencia existente y del sistema de celdas proyectadas |  | 1d | 2024-01-14 | 2024-01-15 | 21, 22, 12, 13, 14, 15, 16, 17, 18, 19, 20 | 0d |  |  |

| ID | WBS | Task | Duration | Start | Finish | Predecessors | Total slack | Free slack |
| --- | --- | --- | --- | --- | --- | --- | --- | --- |
| 35 | 1.22 | **Desmontaje de las instalaciones 10kV antiguas** | 31d | 2024-01-15 | 2024-02-15 |  | 0d |  |
| 36 | 1.22.1 | Desmontaje de equipos 10kV tipo exterior (recloser, TC, seccionadores) | 3d | 2024-01-15 | 2024-01-18 | 24, 25, 26, 27, 28, 29, 30, 31, 32, 33, 34 | 0d |  |
| 37 | 1.22.2 | Retiro de cables de media tensión desconectados | 1d | 2024-01-18 | 2024-01-19 | 36 | 0d |  |
| 38 | 1.22.3 | Desmontaje de pórticos 10kV | 3d | 2024-01-19 | 2024-01-22 | 37 | 0d |  |
| 39 | 1.22.4 | Desmontaje de celdas 10kV ubicadas al interior de la caseta de campo 10kV | 3d | 2024-01-22 | 2024-01-25 | 38 | 0d |  |
| 40 | 1.22.5 | Desmontaje de otros equipos 10kV ubicados dentro de la caseta de campo 10kV | 1d | 2024-01-25 | 2024-01-26 | 39 | 0d |  |
| 41 | 1.22.6 | Demolición de la caseta de campo 10kV | 15d | 2024-01-26 | 2024-02-10 | 40 | 0d |  |
| 42 | 1.22.7 | Demolición de un tramo de las canaletas de cables de control existentes | 5d | 2024-02-10 | 2024-02-15 | 41 | 0d |  |
| 43 | 1.23 | **Obras civiles para equipos electromecánicos en el patio de llaves** | 141d | 2023-11-10 | 2024-03-30 |  | 27d |  |
| 44 | 1.23.1 | Fundación del transformador de potencia, muro cortafuego y descargadores de sobretensión | 40d | 2024-02-15 | 2024-03-26 | 36, 37, 38, 39, 40, 41, 42 | 0d |  |
| 45 | 1.23.2 | Fundación de seccionadores de barra | 12d | 2023-11-10 | 2023-11-22 | 10 | 117d | 0d |
| 46 | 1.23.3 | Fundación de transformadores de corriente | 12d | 2023-11-10 | 2023-11-22 | 10 | 116d | 0d |
| 47 | 1.23.4 | Fundación de transformadores de tensión | 12d | 2023-11-22 | 2023-12-04 | 46, 45 | 117d | 0d |
| 48 | 1.23.5 | Fundación de interruptor de potencia | 12d | 2023-11-22 | 2023-12-04 | 46 | 116d | 0d |
| 49 | 1.23.6 | Loza de aproximación de los transformadores de potencia | 15d | 2024-02-15 | 2024-03-01 | 36, 37, 38, 39, 40, 41, 42 | 52d | 25d |
| 50 | 1.23.7 | Canalizaciones del patio de llaves | 15d | 2024-02-15 | 2024-03-01 | 36, 37, 38, 39, 40, 41, 42 | 29d | 0d |
| 51 | 1.23.8 | Adecuación de la red de tierra profunda | 4d | 2024-03-26 | 2024-03-30 | 44, 45, 46, 47, 48, 49, 50, 53 | 27d |  |
| 52 | 1.24 | **Obras civiles complementarias en el patio de llaves** | 15d | 2023-11-26 | 2023-12-11 |  | 133d |  |
| 53 | 1.24.1 | Instalación del nuevo sistema de saneamiento de la subestación | 15d | 2023-11-26 | 2023-12-11 | 13 | 133d | 106d |
| 54 | 1.25 | **Montaje electromecánico** | 138d | 2023-11-22 | 2024-04-08 |  | 0d |  |
| 55 | 1.25.1 | Montaje y pruebas del sistema de iluminación de la subestación | 4d | 2024-03-01 | 2024-03-05 | 50 | 34d |  |
| 56 | 1.25.2 | Montaje y pruebas del nuevo transformador de potencia 40/40/40 MVA | 8d | 2024-03-26 | 2024-04-03 | 44 | 0d |  |
| 57 | 1.25.3 | Montaje y pruebas del seccionador de barras | 5d | 2023-11-22 | 2023-11-27 | 45 | 128d |  |
| 58 | 1.25.4 | Montaje y pruebas del transformador de corriente | 5d | 2024-03-26 | 2024-03-31 | 46, 44 | 3d |  |
| 59 | 1.25.5 | Montaje y pruebas del transformador de tensión | 4d | 2023-12-04 | 2023-12-08 | 47 | 117d |  |
| 60 | 1.25.6 | Montaje y pruebas del interruptor de potencia | 5d | 2023-12-04 | 2023-12-09 | 48 | 116d |  |
| 61 | 1.25.7 | Montaje y pruebas de los descargadores de sobretensión | 4d | 2024-03-26 | 2024-03-30 | 44 | 9d |  |
| 62 | 1.25.8 | Tendido de los cables 22.9kV desde el nuevo transformador de potencia hasta la celda de llegada 22.9.kV existente | 2d | 2024-03-01 | 2024-03-03 | 50 | 29d | 0d |
| 63 | 1.25.9 | Tendido de los cables 10kV desde el nuevo transformador de potencia hasta la celda de llegada 10kV (celda ubicada en la nueva sala) | 2d | 2024-03-01 | 2024-03-03 | 50 | 29d | 0d |
| 64 | 1.25.10 | Tendido de los cables de control y SSAA para los equipos de patio | 2d | 2024-03-03 | 2024-03-05 | 62, 63 | 29d |  |
| 65 | 1.25.11 | Montaje de los tableros de protección y de regulación automática asociados a la nueva bahía de transformación y al nuevo transformador de potencia | 5d | 2024-04-03 | 2024-04-08 | 12, 56, 57, 58, 59, 60, 64 | 0d |  |
| 66 | 1.25.12 | Pruebas a los tableros de protección y regulación automática del transformador de potencia | 3d | 2024-04-03 | 2024-04-06 | 12, 56, 64 | 2d |  |

| ID | WBS | Task | Type | Duration | Start | Finish | Predecessors | Total slack |
| --- | --- | --- | --- | --- | --- | --- | --- | --- |
| 67 | 1.26 | **Energización del nuevo transformador de potencia** |  | 1d | 2024-04-08 | 2024-04-09 |  | 0d |
| 68 | 1.26.1 | Desenergización del transformador de potencia existente (desconexión de los cables de media tensión) |  | 1d | 2024-04-08 | 2024-04-09 | 55, 56, 57, 58, 59, 60, 61, 62, 63, 64, 65, 66 | 17d |
| 69 | 1.26.2 | Energización del nuevo transformador de potencia 40/40/40 MVA |  | 1d | 2024-04-08 | 2024-04-09 | 55, 56, 57, 58, 59, 60, 61, 62, 63, 64, 65, 66 | 0d |
| 70 | 1.27 | **Actividades finales** |  | 17d | 2024-04-09 | 2024-04-26 |  | 0d |
| 71 | 1.27.1 | Elaboración y aprobación del dossier de calidad |  | 12d | 2024-04-09 | 2024-04-21 | 69 | 0d |
| 72 | 1.27.2 | Acta de entrega y recepción del proyecto a ELD |  | 2d | 2024-04-21 | 2024-04-23 | 71 | 0d |
| 73 | 1.27.3 | Desmovilización del contratista |  | 3d | 2024-04-23 | 2024-04-26 | 72 | 0d |
| 74 | 1.28 | FIN DEL PROYECTO | milestone | 0d | 2024-04-26 | 2024-04-26 | 73 | 0d |
